# DEMO-DC-01

Schedule from MS Project XML, 2026-01-21 to 2026-09-08, status date 2026-03-02, A marks actual dates.

## Calendars

- Standard 5-Day: Mon-Fri 08:00-16:00; Sat-Sun off. Exceptions (off unless hours are given): 2026-04-03 (Public holiday), 2026-05-01 (Public holiday), 2026-06-10 08:00-16:00 (Worked Saturday).

## Schedule

| ID | WBS | Task | Type | Duration | Start | Finish | Predecessors | Complete | Remaining | Baseline start | Baseline finish | Baseline duration | Total slack | Free slack | Constraint | Deadline |
| --- | --- | --- | --- | --- | --- | --- | --- | --- | --- | --- | --- | --- | --- | --- | --- | --- |
| 1 | 1 | **Project Milestones** |  | 0d | 2026-01-21 | 2026-09-08 |  |  |  |  |  |  |  |  |  |  |
| 2 | 1.1 | Notice to Proceed | milestone | 0d | 2026-01-21 A | 2026-01-21 A |  | 100% |  | 2026-01-12 | 2026-01-12 | 0d |  |  |  |  |
| 3 | 1.2 | Power-on | milestone | 0d | 2026-08-25 | 2026-08-25 | 30 |  |  | 2026-08-12 | 2026-08-12 | 0d | 0d |  |  |  |
| 4 | 1.3 | Practical Completion | milestone | 0d | 2026-09-08 | 2026-09-08 | 31 |  |  | 2026-08-26 | 2026-08-26 | 0d | 0d |  | finish no later than 2026-09-09 | 2026-09-30 |
| 5 | 2 | **Enabling Works** |  | 0d | 2026-01-21 | 2026-03-05 |  | 71% |  |  |  |  |  |  |  |  |
| 6 | 2.1 | Site establishment & hoarding |  | 10d | 2026-01-21 A | 2026-02-03 A | 2 | 100% |  | 2026-01-12 | 2026-01-23 | 10d |  |  |  |  |
| 7 | 2.2 | Strip-out of existing services |  | 15d | 2026-02-04 A | 2026-02-24 A | 6 | 100% |  | 2026-01-26 | 2026-02-13 | 15d |  |  |  |  |
| 8 | 2.3 | Builders-work openings |  | 10d | 2026-02-18 A | 2026-03-05 | 7 | 60% | 4d | 2026-02-16 | 2026-02-27 | 10d | 12d | 0d |  |  |
| 9 | 3 | **Structure & Envelope** |  | 0d | 2026-02-23 | 2026-04-10 | 5 |  |  |  |  |  |  |  |  |  |
| 10 | 3.1 | Structural steel platform |  | 20d | 2026-02-23 A | 2026-03-19 | 8 | 30% | 14d | 2026-03-02 | 2026-03-27 | 20d | 16d | 0d |  |  |
| 11 | 3.2 | Roof penetrations & weatherproofing |  | 10d | 2026-03-20 | 2026-04-02 | 10 |  |  | 2026-03-30 | 2026-04-13 | 10d | 51d | 0d |  |  |
| 12 | 3.3 | Plant deck screed |  | 5d | 2026-04-06 | 2026-04-10 | 11 |  |  | 2026-04-14 | 2026-04-20 | 5d | 51d | 31d |  |  |
| 13 | 4 | **MEP Installation** |  | 0d | 2026-02-10 | 2026-07-07 |  |  |  |  |  |  |  |  |  |  |
| 14 | 4.1 | Chiller procurement (16-wk lead) |  | 80d | 2026-02-10 A | 2026-05-26 | 2 | 25% | 60d | 2026-01-12 | 2026-05-05 | 80d | 20d | 0d |  |  |
| 15 | 4.2 | CRAC unit procurement |  | 60d | 2026-03-02 | 2026-05-26 | 2 |  |  | 2026-01-12 | 2026-04-06 | 60d | 0d |  |  |  |
| 16 | 4.3 | Pipework first fix |  | 20d | 2026-03-27 | 2026-04-24 | 10FS+5d |  |  | 2026-04-07 | 2026-05-05 | 20d | 21d |  |  |  |
| 17 | 4.4 | Electrical containment |  | 15d | 2026-03-27 | 2026-04-17 | 10FS+5d |  |  | 2026-04-07 | 2026-04-27 | 15d | 16d | 0d |  |  |
| 18 | 4.5 | Chiller installation & rigging |  | 10d | 2026-05-27 | 2026-06-09 | 12, 14 |  |  | 2026-05-06 | 2026-05-19 | 10d | 20d |  |  |  |
| 19 | 4.6 | CRAC installation |  | 10d | 2026-05-27 | 2026-06-09 | 15, 16 |  |  | 2026-05-06 | 2026-05-19 | 10d | 0d |  |  |  |
| 20 | 4.6b | Spare CRAC unit (option not taken) | inactive | 5d | 2026-05-27 | 2026-06-09 | 15 |  |  |  |  |  | 0d |  |  |  |
| 21 | 4.7 | LV switchboard installation |  | 15d | 2026-04-20 | 2026-05-11 | 17 |  |  | 2026-04-28 | 2026-05-19 | 15d | 16d |  |  |  |
| 22 | 4.8 | Cabling & terminations |  | 25d | 2026-06-03 | 2026-07-07 | 19SS+5d, 21 |  |  | 2026-05-20 | 2026-06-23 | 25d | 0d |  |  |  |
| 23 | 5 | **Fit-Out & Finishes** |  | 0d | 2026-03-06 | 2026-05-04 |  |  |  |  |  |  |  |  |  |  |
| 24 | 5.1 | Raised access floor |  | 15d | 2026-03-06 | 2026-03-26 | 8 |  |  | 2026-03-02 | 2026-03-20 | 15d | 46d | 0d |  |  |
| 25 | 5.2 | Partitions & fire-stopping |  | 20d | 2026-03-13 | 2026-04-10 | 24SS+5d |  |  | 2026-03-09 | 2026-04-06 | 20d | 46d | 0d |  |  |
| 26 | 5.3 | Ceilings & finishes | manual | 15d | 2026-04-13 | 2026-05-04 | 25 |  |  | 2026-04-07 | 2026-04-27 | 15d |  |  |  |  |

| ID | WBS | Task | Duration | Start | Finish | Predecessors | Baseline start | Baseline finish | Baseline duration | Total slack | Constraint |
| --- | --- | --- | --- | --- | --- | --- | --- | --- | --- | --- | --- |
| 27 | 6 | **Commissioning** | 0d | 2026-07-08 | 2026-09-08 |  |  |  |  |  |  |
| 28 | 6.1 | Pre-commissioning inspections | 10d | 2026-07-08 | 2026-07-21 | 18, 22, 26 | 2026-06-24 | 2026-07-07 | 10d | 0d |  |
| 29 | 6.2 | L3 component commissioning | 15d | 2026-07-22 | 2026-08-11 | 28 | 2026-07-08 | 2026-07-28 | 15d | 0d |  |
| 30 | 6.3 | L4 integrated systems test | 10d | 2026-08-12 | 2026-08-25 | 29 | 2026-07-29 | 2026-08-11 | 10d | 0d |  |
| 31 | 6.4 | L5 IST & client witness | 10d | 2026-08-26 | 2026-09-08 | 30, 3 | 2026-08-12 | 2026-08-25 | 10d | 0d | finish no later than 2026-09-15 |
